# Cronograma P4 - Final Corrigido

Schedule from MS Project, 2014-12-02 to 2015-03-17, A marks actual dates.

## Calendars

- Padrão: Mon-Fri 09:00-12:00, 13:00-18:00; Sat-Sun off.

## Resources

| Resource |
| --- |
| Gerente |
| Analista e Projetista |
| SQA |
| Codificador |
| Gerente - Roberto e Renan |
| Gerentes - Roberto e Renan |
| Analista e Projetista - Haroldo |
| Analista e Projetista - Haroldo e Thiago |
| SQA - Rogerio |
| Codificadores - Valdir e Gabriel |

## Schedule

| ID | WBS | Task | Type | Duration | Start | Finish | Predecessors | Complete | Remaining | Total slack | Resources | Work | Actual work |
| --- | --- | --- | --- | --- | --- | --- | --- | --- | --- | --- | --- | --- | --- |
| 1 | 1 | **Projeto 4 - Currículo Lattes** |  | 76d | 2014-12-02 A | 2015-03-17 |  | 99% | 0d | 0d |  | 968h | 968h |
| 2 | 1.1 | **Planejamento** |  | 32d | 2014-12-02 A | 2015-01-14 A |  | 100% |  |  | Gerentes - Roberto e Renan | 520h | 520h |
| 3 | 1.1.1 | **Gerar Documento de Requisitos** |  | 6d | 2014-12-02 A | 2014-12-09 A |  | 100% |  |  | Gerentes - Roberto e Renan | 96h | 96h |
| 4 | 1.1.1.1 | Definição do documento de requisitos | manual | 1d | 2014-12-02 A | 2014-12-02 A |  | 100% |  |  | Gerentes - Roberto e Renan | 8h | 8h |
| 5 | 1.1.1.2 | V&V 1 - Doc. Requisitos | manual | 3d | 2014-12-03 A | 2014-12-05 A | 4 | 100% |  |  | Gerentes - Roberto e Renan | 24h | 24h |
| 6 | 1.1.1.3 | Correção do documento de requisitos | manual | 2d | 2014-12-08 A | 2014-12-09 A | 5, 4 | 100% |  |  | Gerentes - Roberto e Renan | 16h | 16h |
| 7 | 1.1.2 | **Definir Métricas Estimativas e Recursos** |  | 9d | 2014-12-06 A | 2014-12-18 A |  | 100% |  |  | Gerentes - Roberto e Renan | 112h | 112h |
| 8 | 1.1.2.1 | Listar recursos disponíveis | manual | 3d | 2014-12-06 A | 2014-12-09 A |  | 100% |  |  | Gerente - Roberto e Renan | 24h | 24h |
| 9 | 1.1.2.2 | Revisar recursos disponíveis | manual | 2d | 2014-12-10 A | 2014-12-11 A | 8 | 100% |  |  | Gerentes - Roberto e Renan | 16h | 16h |
| 10 | 1.1.2.3 | Definir métricas e estimativas | milestone, manual | 0d | 2014-12-12 A | 2014-12-18 A |  | 100% |  |  | Gerentes - Roberto e Renan |  |  |
| 11 | 1.1.3 | **Gerar Cronograma** |  | 3d | 2015-01-10 A | 2015-01-14 A |  | 100% |  |  | Gerentes - Roberto e Renan | 56h | 56h |
| 12 | 1.1.3.1 | Gerar cronograma | manual | 2d | 2015-01-10 A | 2015-01-12 A |  | 100% |  |  | Gerentes - Roberto e Renan | 16h | 16h |
| 13 | 1.1.3.2 | Revisar e corrigir cronograma | manual | 2d | 2015-01-13 A | 2015-01-14 A | 12 | 100% |  |  | Gerentes - Roberto e Renan | 16h | 16h |
| 14 | 1.2 | Fim do Planejamento | milestone, manual | 0d | 2014-12-02 | 2014-12-02 |  |  |  |  |  |  |  |
| 15 | 1.3 | **Módulo 1** |  | 24d | 2015-01-14 A | 2015-02-16 A |  | 100% |  |  |  | 264h | 264h |
| 16 | 1.3.1 | **Casos de uso (alto nível e expandido)** |  | 4d | 2015-01-14 A | 2015-01-19 A |  | 100% |  |  |  | 40h | 40h |
| 17 | 1.3.1.1 | Gerar | manual | 2d | 2015-01-14 A | 2015-01-15 A |  | 100% |  |  | Analista e Projetista - Haroldo e Thiago | 16h | 16h |
| 18 | 1.3.1.2 | V&V 1 | manual | 2d | 2015-01-16 A | 2015-01-17 A | 17 | 100% |  |  | SQA - Rogerio | 16h | 16h |
| 19 | 1.3.1.3 | Corrigir | manual | 1d | 2015-01-19 A | 2015-01-19 A | 18, 17 | 100% |  |  | Analista e Projetista - Haroldo e Thiago | 8h | 8h |
| 20 | 1.3.2 | **Diagrama de caso de uso** |  | 4d | 2015-01-18 A | 2015-01-22 A | 16 | 100% |  |  |  | 40h | 40h |
| 21 | 1.3.2.1 | Gerar | manual | 2d | 2015-01-20 A | 2015-01-21 A | 16 | 100% |  |  | Analista e Projetista - Haroldo e Thiago | 16h | 16h |
| 22 | 1.3.2.2 | V&V 1 | manual | 2d | 2015-01-18 A | 2015-01-19 A | 21 | 100% |  |  | SQA - Rogerio | 16h | 16h |
| 23 | 1.3.2.3 | Corrigir | manual | 1d | 2015-01-22 A | 2015-01-22 A | 22, 21 | 100% |  |  | Analista e Projetista - Haroldo e Thiago | 8h | 8h |
| 24 | 1.3.3 | RTF com Grupo 01 | manual | 1d | 2015-01-22 A | 2015-01-22 A |  | 100% |  |  |  |  |  |

| ID | WBS | Task | Type | Duration | Start | Finish | Predecessors | Complete | Resources | Work | Actual work |
| --- | --- | --- | --- | --- | --- | --- | --- | --- | --- | --- | --- |
| 25 | 1.3.4 | **Modelo Conceitual** |  | 3d | 2015-01-21 A | 2015-01-24 A | 20 | 100% |  | 32h | 32h |
| 26 | 1.3.4.1 | Gerar | manual | 1d | 2015-01-21 A | 2015-01-21 A |  | 100% | Analista e Projetista - Haroldo e Thiago | 8h | 8h |
| 27 | 1.3.4.2 | V&V 1 | manual | 2d | 2015-01-22 A | 2015-01-23 A | 26 | 100% | SQA - Rogerio | 16h | 16h |
| 28 | 1.3.4.3 | Corrigir | manual | 1d | 2015-01-24 A | 2015-01-24 A | 27 | 100% | Analista e Projetista - Haroldo e Thiago | 8h | 8h |
| 29 | 1.3.5 | **Diagrama de sequência** |  | 10d | 2015-01-20 A | 2015-02-02 A | 25 | 100% |  | 40h | 40h |
| 30 | 1.3.5.1 | Gerar | manual | 2d | 2015-01-20 A | 2015-01-21 A | 16 | 100% | Analista e Projetista - Haroldo e Thiago | 16h | 16h |
| 31 | 1.3.5.2 | V&V 1 | manual | 2d | 2015-01-29 A | 2015-01-30 A | 30 | 100% | SQA - Rogerio | 16h | 16h |
| 32 | 1.3.5.3 | Corrigir | manual | 1d | 2015-02-02 A | 2015-02-02 A | 31, 30 | 100% | Analista e Projetista - Haroldo e Thiago | 8h | 8h |
| 33 | 1.3.6 | RTF com Grupo 01 | manual | 1d | 2015-01-29 A | 2015-01-29 A |  | 100% |  |  |  |
| 34 | 1.3.7 | **Diagrama de colaboração** |  | 4d | 2015-02-03 A | 2015-02-06 A | 30 | 100% |  | 32h | 32h |
| 35 | 1.3.7.1 | Gerar | manual | 2d | 2015-02-03 A | 2015-02-04 A | 29 | 100% | Analista e Projetista - Haroldo e Thiago | 16h | 16h |
| 36 | 1.3.7.2 | V&V 1 | manual | 1d | 2015-02-05 A | 2015-02-05 A | 35 | 100% | SQA - Rogerio | 8h | 8h |
| 37 | 1.3.7.3 | Corrigir | manual | 1d | 2015-02-06 A | 2015-02-06 A | 36, 35 | 100% | Analista e Projetista - Haroldo e Thiago | 8h | 8h |
| 38 | 1.3.8 | RTF com Grupo 01 | manual | 1d | 2015-02-05 A | 2015-02-05 A |  | 100% |  |  |  |
| 39 | 1.3.9 | **Diagrama de classes** |  | 3d | 2015-02-05 A | 2015-02-09 A | 34 | 100% |  | 24h | 24h |
| 40 | 1.3.9.1 | Gerar | manual | 1d | 2015-02-05 A | 2015-02-05 A |  | 100% | Analista e Projetista - Haroldo e Thiago | 8h | 8h |
| 41 | 1.3.9.2 | V&V 1 | manual | 1d | 2015-02-06 A | 2015-02-06 A | 40 | 100% | SQA - Rogerio | 8h | 8h |
| 42 | 1.3.9.3 | Corrigir | manual | 1d | 2015-02-09 A | 2015-02-09 A | 41 | 100% | Analista e Projetista - Haroldo e Thiago | 8h | 8h |
| 43 | 1.3.10 | **Codificação** |  | 6d | 2015-02-08 A | 2015-02-16 A | 39 | 100% |  | 56h | 56h |
| 44 | 1.3.10.1 | Codificação do projeto | manual | 4d | 2015-02-08 A | 2015-02-11 A |  | 100% | Codificadores - Valdir e Gabriel | 32h | 32h |
| 45 | 1.3.10.2 | Testes | manual | 2d | 2015-02-12 A | 2015-02-13 A | 44 | 100% | SQA - Rogerio | 16h | 16h |
| 46 | 1.3.10.3 | Correção da codificação | manual | 1d | 2015-02-16 A | 2015-02-16 A | 45 | 100% | Codificadores - Valdir e Gabriel | 8h | 8h |
| 47 | 1.4 | Fim do Módulo 1 | milestone, manual | 0d | 2014-12-02 | 2014-12-02 |  |  |  |  |  |
| 48 | 1.5 | **Módulo 2** |  | 12d | 2015-03-02 A | 2015-03-17 A |  | 100% |  | 184h | 184h |
| 49 | 1.5.1 | **Casos de uso (alto nível e expandido)** |  | 3d | 2015-03-02 A | 2015-03-04 A |  | 100% |  | 24h | 24h |
| 50 | 1.5.1.1 | Gerar | manual | 1d | 2015-03-02 A | 2015-03-02 A |  | 100% | Analista e Projetista - Haroldo e Thiago | 8h | 8h |
| 51 | 1.5.1.2 | V&V 2 | manual | 1d | 2015-03-03 A | 2015-03-03 A | 50 | 100% | SQA - Rogerio | 8h | 8h |
| 52 | 1.5.1.3 | Corrigir | manual | 1d | 2015-03-04 A | 2015-03-04 A | 51 | 100% | Analista e Projetista - Haroldo e Thiago | 8h | 8h |

| ID | WBS | Task | Type | Duration | Start | Finish | Predecessors | Complete | Actual finish | Resources | Work | Actual work |
| --- | --- | --- | --- | --- | --- | --- | --- | --- | --- | --- | --- | --- |
| 53 | 1.5.2 | **Diagrama de caso de uso** |  | 4d | 2015-03-03 A | 2015-03-06 | 49 | 100% | 2015-03-05 |  | 24h | 24h |
| 54 | 1.5.2.1 | Gerar | manual | 1d | 2015-03-03 A | 2015-03-03 A |  | 100% |  | Analista e Projetista - Haroldo e Thiago | 8h | 8h |
| 55 | 1.5.2.2 | V&V 2 | manual | 1d | 2015-03-04 A | 2015-03-04 A | 54 | 100% |  | SQA - Rogerio | 8h | 8h |
| 56 | 1.5.2.3 | Corrigir | manual | 1d | 2015-03-05 A | 2015-03-05 A | 55 | 100% |  | Analista e Projetista - Haroldo e Thiago | 8h | 8h |
| 57 | 1.5.3 | **Modelo Conceitual** |  | 3d | 2015-03-06 A | 2015-03-10 | 53 | 100% | 2015-03-08 |  | 24h | 24h |
| 58 | 1.5.3.1 | Gerar | manual | 1d | 2015-03-06 A | 2015-03-06 A |  | 100% |  | Analista e Projetista - Haroldo e Thiago | 8h | 8h |
| 59 | 1.5.3.2 | V&V 2 | manual | 1d | 2015-03-07 A | 2015-03-07 A | 58 | 100% |  | SQA - Rogerio | 8h | 8h |
| 60 | 1.5.3.3 | Corrigir | manual | 1d | 2015-03-08 A | 2015-03-08 A | 59 | 100% |  | Analista e Projetista - Haroldo e Thiago | 8h | 8h |
| 61 | 1.5.4 | **Diagrama de sequência** |  | 3d | 2015-03-09 A | 2015-03-11 A | 57 | 100% |  |  | 24h | 24h |
| 62 | 1.5.4.1 | Gerar | manual | 1d | 2015-03-09 A | 2015-03-09 A |  | 100% |  | Analista e Projetista - Haroldo e Thiago | 8h | 8h |
| 63 | 1.5.4.2 | V&V 2 | manual | 1d | 2015-03-10 A | 2015-03-10 A | 62 | 100% |  | SQA - Rogerio | 8h | 8h |
| 64 | 1.5.4.3 | Corrigir | manual | 1d | 2015-03-11 A | 2015-03-11 A | 63 | 100% |  | Analista e Projetista - Haroldo e Thiago | 8h | 8h |
| 65 | 1.5.5 | **Diagrama de colaboração** |  | 3d | 2015-03-10 A | 2015-03-12 A | 61 | 100% |  |  | 32h | 32h |
| 66 | 1.5.5.1 | Gerar | manual | 2d | 2015-03-10 A | 2015-03-11 A |  | 100% |  | Analista e Projetista - Haroldo e Thiago | 16h | 16h |
| 67 | 1.5.5.2 | V&V 2 | manual | 1d | 2015-03-11 A | 2015-03-11 A | 66 | 100% |  | SQA - Rogerio | 8h | 8h |
| 68 | 1.5.5.3 | Corrigir | manual | 1d | 2015-03-12 A | 2015-03-12 A | 67 | 100% |  | Analista e Projetista - Haroldo e Thiago | 8h | 8h |
| 69 | 1.5.6 | **Diagrama de classes** |  | 3d | 2015-03-11 A | 2015-03-13 A | 65 | 100% |  |  | 24h | 24h |
| 70 | 1.5.6.1 | Gerar | manual | 1d | 2015-03-11 A | 2015-03-11 A |  | 100% |  | Analista e Projetista - Haroldo e Thiago | 8h | 8h |
| 71 | 1.5.6.2 | V&V 2 | manual | 1d | 2015-03-12 A | 2015-03-12 A | 70 | 100% |  | SQA - Rogerio | 8h | 8h |
| 72 | 1.5.6.3 | Corrigir | manual | 1d | 2015-03-13 A | 2015-03-13 A | 71 | 100% |  | Analista e Projetista - Haroldo e Thiago | 8h | 8h |
| 73 | 1.5.7 | **Codificação** |  | 2d | 2015-03-14 A | 2015-03-17 A | 69 | 100% |  |  | 32h | 32h |
| 74 | 1.5.7.1 | Codificação do projeto | manual | 2d | 2015-03-14 A | 2015-03-16 A |  | 100% |  | Codificadores - Valdir e Gabriel | 16h | 16h |
| 75 | 1.5.7.2 | Testes | manual | 1d | 2015-03-16 A | 2015-03-16 A | 74 | 100% |  | SQA - Rogerio | 8h | 8h |
| 76 | 1.5.7.3 | Correção da codificação | manual | 1d | 2015-03-17 A | 2015-03-17 A | 75 | 100% |  | Codificadores - Valdir e Gabriel | 8h | 8h |
| 77 | 1.6 | Fim do Projeto | milestone, manual | 0d | 2014-12-02 | 2014-12-02 |  |  |  |  |  |  |
